Schedule from MS Project, 2021-09-15 to 2022-01-05, costs in ¥, A marks actual dates.

## Calendars

- 标准: Mon-Fri 08:00-12:00, 13:00-17:00; Sat-Sun off.

## Resources

| Resource | Rate |
| --- | --- |
| 吴联想 | 49.56 |
| 郑航舰 | 49.56 |
| 王义博 | 49.56 |

## Schedule

| ID | WBS | Task | Type | Duration | Start | Finish | Predecessors | Complete | Remaining | Actual start | Actual finish | Constraint | Resources | Work | Actual work | Cost | Actual cost |
| --- | --- | --- | --- | --- | --- | --- | --- | --- | --- | --- | --- | --- | --- | --- | --- | --- | --- |
| 1 | 1 | **软件项目开发** |  | 81d? | 2021-09-15 A | 2022-01-05 |  | 26% | 60.24d? |  |  |  |  | 219h | 56h | 10,853.64 | 2,775.36 |
| 2 | 1.1 | **项目介绍及PPT** |  | 1d | 2021-09-15 A | 2021-09-15 A |  | 100% |  |  |  |  |  | 6h | 6h | 297.36 | 297.36 |
| 3 | 1.1.1 | 课题选择 |  | 0.25d | 2021-09-15 A | 2021-09-15 A |  | 100% |  |  |  |  | 吴联想 | 2h | 2h | 99.12 | 99.12 |
| 4 | 1.1.2 | 项目介绍word |  | 0.25d | 2021-09-15 A | 2021-09-15 A |  | 100% |  |  |  |  | 郑航舰 | 2h | 2h | 99.12 | 99.12 |
| 5 | 1.1.3 | 项目介绍PPT |  | 0.25d | 2021-09-15 A | 2021-09-15 A |  | 100% |  |  |  |  | 王义博 | 2h | 2h | 99.12 | 99.12 |
| 6 | 1.1.4 | 项目介绍评审 | manual | 1d | 2021-09-15 A | 2021-09-15 A |  | 100% |  |  |  |  |  |  |  |  |  |
| 7 | 1.2 | **项目计划及PPT** |  | 6d? | 2021-09-22 A | 2021-09-29 | 2 | 100% |  |  | 2021-09-28 |  |  | 8h | 8h | 396.48 | 396.48 |
| 8 | 1.2.1 | 小组会议 |  | 0.12d? | 2021-09-22 A | 2021-09-22 A |  | 100% |  |  |  |  | 吴联想; 王义博; 郑航舰 | 1h | 1h | 49.56 | 49.56 |
| 9 | 1.2.2 | 项目计划word初稿 |  | 0.25d? | 2021-09-22 A | 2021-09-22 A |  | 100% |  |  |  |  | 郑航舰 | 2h | 2h | 99.12 | 99.12 |
| 10 | 1.2.3 | 小组会议 |  | 0.12d? | 2021-09-24 A | 2021-09-24 A |  | 100% |  |  |  | start no earlier than 2021-09-24 | 吴联想 | 1h | 1h | 49.56 | 49.56 |
| 11 | 1.2.4 | 项目计划初版修订 |  | 0.25d? | 2021-09-27 A | 2021-09-27 A |  | 100% |  |  |  | start no earlier than 2021-09-27 | 郑航舰 | 2h | 2h | 99.12 | 99.12 |
| 12 | 1.2.5 | 项目计划PPT制作 |  | 0.25d? | 2021-09-28 A | 2021-09-28 A |  | 100% |  |  |  | start no earlier than 2021-09-28 | 王义博 | 2h | 2h | 99.12 | 99.12 |
| 13 | 1.2.6 | 项目计划评审 | manual | 1d | 2021-09-22 A | 2021-09-22 A |  | 100% |  |  |  |  |  |  |  |  |  |
| 14 | 1.3 | **项目计划修订** |  | 10d? | 2021-09-30 | 2021-10-13 A | 7 | 100% |  | 2021-10-02 |  |  |  | 13h | 13h | 644.28 | 644.28 |
| 15 | 1.3.1 | 项目计划修订 | manual | 2d | 2021-10-02 A | 2021-10-04 A |  | 100% |  |  |  |  | 郑航舰 | 2h | 2h | 99.12 | 99.12 |
| 16 | 1.3.2 | 小组会议 | manual | 1d | 2021-10-03 A | 2021-10-03 A |  | 100% |  |  |  |  | 吴联想; 王义博; 郑航舰 | 1h | 1h | 49.56 | 49.56 |
| 17 | 1.3.3 | 项目计划PPT修订 | manual | 2d | 2021-10-05 A | 2021-10-06 A |  | 100% |  |  |  |  | 王义博 | 2h | 2h | 99.12 | 99.12 |
| 18 | 1.3.4 | 团建 | manual | 1d | 2021-10-07 A | 2021-10-07 A |  | 100% |  |  |  |  | 吴联想 | 2h | 2h | 99.12 | 99.12 |
| 19 | 1.3.5 | 可行性分析 | manual | 1d | 2021-10-13 A | 2021-10-13 A |  | 100% |  |  |  |  | 吴联想 | 2h | 2h | 99.12 | 99.12 |
| 20 | 1.3.6 | 项目计划书修订 | manual | 1d | 2021-10-13 A | 2021-10-13 A |  | 100% |  |  |  |  | 郑航舰 | 2h | 2h | 99.12 | 99.12 |
| 21 | 1.3.7 | 项目计划PPT修订 | manual | 1d | 2021-10-13 A | 2021-10-13 A |  | 100% |  |  |  |  | 王义博 | 2h | 2h | 99.12 | 99.12 |
| 22 | 1.3.8 | 项目计划评审 | manual | 1d | 2021-10-13 A | 2021-10-13 A |  | 100% |  |  |  |  |  |  |  |  |  |
| 23 | 1.4 | **可行性分析报告** |  | 8d? | 2021-10-14 | 2021-10-23 A | 14 | 100% |  | 2021-10-15 |  |  |  | 29h | 29h | 1,437.24 | 1,437.24 |
| 24 | 1.4.1 | 小组会议 | manual | 1d | 2021-10-22 A | 2021-10-22 A |  | 100% |  |  |  |  | 吴联想; 王义博; 郑航舰 | 1h | 1h | 49.56 | 49.56 |
| 25 | 1.4.2 | 可行性分析报告初稿 | manual | 1d | 2021-10-16 A | 2021-10-16 A |  | 100% |  |  |  |  | 郑航舰 | 2h | 2h | 99.12 | 99.12 |
| 26 | 1.4.3 | 可行性分析 | manual | 1d | 2021-10-15 A | 2021-10-15 A |  | 100% |  |  |  |  | 吴联想 | 2h | 2h | 99.12 | 99.12 |
| 27 | 1.4.4 | 绘制数据流图 | manual | 1d | 2021-10-15 A | 2021-10-15 A |  | 100% |  |  |  |  | 郑航舰 | 2h | 2h | 99.12 | 99.12 |
| 28 | 1.4.5 | 绘制系统流程图 | manual | 1d | 2021-10-15 A | 2021-10-15 A |  | 100% |  |  |  |  | 郑航舰 | 2h | 2h | 99.12 | 99.12 |
| 29 | 1.4.6 | 可行性分析修改 | manual | 1d | 2021-10-16 A | 2021-10-16 A |  | 100% |  |  |  |  | 王义博 | 2h | 2h | 99.12 | 99.12 |
| 30 | 1.4.7 | 可行性分析报告评审 | manual | 1d | 2021-10-20 A | 2021-10-20 A |  | 100% |  |  |  |  |  |  |  |  |  |
| 31 | 1.4.8 | 复查系统规模和目标 | manual | 1d | 2021-10-22 A | 2021-10-22 A |  | 100% |  |  |  |  | 吴联想 | 2h | 2h | 99.12 | 99.12 |
| 32 | 1.4.9 | 研究目前正在使用的系统 | manual | 1d | 2021-10-23 A | 2021-10-23 A |  | 100% |  |  |  |  | 王义博 | 2h | 2h | 99.12 | 99.12 |
| 33 | 1.4.10 | 导出新系统的高层逻辑模型 | manual | 1d | 2021-10-23 A | 2021-10-23 A |  | 100% |  |  |  |  | 王义博 | 2h | 2h | 99.12 | 99.12 |
| 34 | 1.4.11 | 进一步定义问题 | manual | 1d | 2021-10-23 A | 2021-10-23 A |  | 100% |  |  |  |  | 王义博; 吴联想 | 2h | 2h | 99.12 | 99.12 |
| 35 | 1.4.12 | 导出和评价供选择的解法 | manual | 1d | 2021-10-23 A | 2021-10-23 A |  | 100% |  |  |  |  | 王义博; 郑航舰 | 2h | 2h | 99.12 | 99.12 |
| 36 | 1.4.13 | 推荐行动方针 | manual | 1d | 2021-10-23 A | 2021-10-23 A |  | 100% |  |  |  |  | 郑航舰 | 2h | 2h | 99.12 | 99.12 |
| 37 | 1.4.14 | 草拟开发计划 | manual | 1d | 2021-10-23 A | 2021-10-23 A |  | 100% |  |  |  |  |  |  |  |  |  |
| 38 | 1.4.15 | 书写文档提交审查 | manual | 1d | 2021-10-23 A | 2021-10-23 A |  | 100% |  |  |  |  | 吴联想 | 2h | 2h | 99.12 | 99.12 |
| 39 | 1.4.16 | 项目计划书修订 | manual | 1d | 2021-10-23 A | 2021-10-23 A |  | 100% |  |  |  |  | 郑航舰 | 2h | 2h | 99.12 | 99.12 |
| 40 | 1.4.17 | 可行性分析报告修订 | manual | 1d | 2021-10-23 A | 2021-10-23 A |  | 100% |  |  |  |  | 郑航舰 | 2h | 2h | 99.12 | 99.12 |

| ID | WBS | Task | Type | Duration | Start | Finish | Predecessors | Remaining | Actual start | Resources | Work | Cost |
| --- | --- | --- | --- | --- | --- | --- | --- | --- | --- | --- | --- | --- |
| 41 | 1.5 | **需求说明SRS，需求评审PPT** |  | 5d | 2021-10-21 | 2021-10-27 | 23 | 5d | 2021-10-22 |  | 15h | 743.4 |
| 42 | 1.5.1 | 需求说明初稿 | manual | 0.25d | 2021-10-22 A | 2021-10-22 |  | 0.25d |  | 郑航舰 | 2h | 99.12 |
| 43 | 1.5.2 | 小组会议 | manual | 1d | 2021-10-23 | 2021-10-23 |  |  |  | 吴联想; 王义博; 郑航舰 | 1h | 49.56 |
| 44 | 1.5.3 | 原型设计 | manual | 1d | 2021-10-22 | 2021-10-22 |  |  |  | 郑航舰 | 2h | 99.12 |
| 45 | 1.5.4 | 绘制需求用图 | manual | 1d | 2021-10-22 | 2021-10-22 |  |  |  | 郑航舰 | 2h | 99.12 |
| 46 | 1.5.5 | 绘制ER图 | manual | 1d | 2021-10-22 | 2021-10-22 |  |  |  | 吴联想 | 2h | 99.12 |
| 47 | 1.5.6 | 绘制层次方框图 | manual | 1d | 2021-10-22 | 2021-10-22 |  |  |  | 王义博 | 2h | 99.12 |
| 48 | 1.5.7 | 需求说明初稿修改 | manual | 1d | 2021-10-23 | 2021-10-23 |  |  |  | 郑航舰 | 2h | 99.12 |
| 49 | 1.5.8 | 需求说明PPT | manual | 2d | 2021-10-23 | 2021-10-25 |  |  |  | 王义博 | 2h | 99.12 |
| 50 | 1.6 | **SRS修订** |  | 5d | 2021-10-28 | 2021-11-03 | 41 |  |  |  | 8h | 396.48 |
| 51 | 1.6.1 | 访谈 | manual | 2d | 2021-10-29 | 2021-11-01 |  |  |  | 吴联想 | 4h | 198.24 |
| 52 | 1.6.2 | 小组会议 | manual | 1d | 2021-10-29 | 2021-10-29 |  |  |  | 吴联想; 王义博; 郑航舰 | 1h | 49.56 |
| 53 | 1.6.3 | 需求说明修订 | manual | 1d | 2021-10-29 | 2021-10-29 |  |  |  | 郑航舰 | 2h | 99.12 |
| 54 | 1.6.4 | 需求说明PPT修改 | manual | 1d | 2021-10-30 | 2021-10-30 |  |  |  | 郑航舰 | 1h | 49.56 |
| 55 | 1.7 | **总体设计报告** |  | 5d | 2021-11-04 | 2021-11-10 | 50 |  |  |  | 18h | 892.08 |
| 56 | 1.7.1 | 小组会议 | manual | 1d | 2021-11-05 | 2021-11-05 |  |  |  | 吴联想; 王义博; 郑航舰 | 1h | 49.56 |
| 57 | 1.7.2 | 总体设计报告初稿 | manual | 2d | 2021-11-05 | 2021-11-08 |  |  |  | 吴联想; 郑航舰 | 2h | 99.12 |
| 58 | 1.7.3 | 设想供选择的方案 | manual | 1d | 2021-11-05 | 2021-11-05 |  |  |  | 吴联想 | 1h | 49.56 |
| 59 | 1.7.4 | 选择合理的方案 | manual | 1d | 2021-11-05 | 2021-11-05 |  |  |  | 王义博 | 1h | 49.56 |
| 60 | 1.7.5 | 推荐最佳方案 | manual | 1d | 2021-11-05 | 2021-11-05 |  |  |  | 王义博 | 1h | 49.56 |
| 61 | 1.7.6 | 功能分解 | manual | 1d | 2021-11-05 | 2021-11-05 |  |  |  | 吴联想 | 1h | 49.56 |
| 62 | 1.7.7 | 设计软件结构 | manual | 2d | 2021-11-06 | 2021-11-08 |  |  |  | 吴联想 | 3h | 148.68 |
| 63 | 1.7.8 | 设计数据库 | manual | 2d | 2021-11-06 | 2021-11-08 |  |  |  | 王义博 | 3h | 148.68 |
| 64 | 1.7.9 | 制定测试计划 | manual | 2d | 2021-11-06 | 2021-11-08 |  |  |  | 郑航舰 | 2h | 99.12 |
| 65 | 1.7.10 | 书写文档 | manual | 1d | 2021-11-06 | 2021-11-06 |  |  |  | 郑航舰 | 2h | 99.12 |
| 66 | 1.7.11 | 审查和复查 | manual | 1d | 2021-11-06 | 2021-11-06 |  |  |  | 吴联想 | 1h | 49.56 |

| ID | WBS | Task | Type | Duration | Start | Finish | Predecessors | Resources | Work | Cost |
| --- | --- | --- | --- | --- | --- | --- | --- | --- | --- | --- |
| 67 | 1.8 | **详细设计报告** |  | 5d | 2021-11-11 | 2021-11-17 | 55 |  | 14h | 693.84 |
| 68 | 1.8.1 | 小组会议 | manual | 1d | 2021-11-12 | 2021-11-12 |  | 吴联想; 王义博; 郑航舰 | 1h | 49.56 |
| 69 | 1.8.2 | 详细设计报告初稿 | manual | 2d | 2021-11-12 | 2021-11-15 |  | 郑航舰 | 2h | 99.12 |
| 70 | 1.8.3 | 人机界面完善 | manual | 1d | 2021-11-12 | 2021-11-12 |  | 吴联想 | 2h | 99.12 |
| 71 | 1.8.4 | 过程设计 | manual | 1d | 2021-11-12 | 2021-11-12 |  | 王义博 | 2h | 99.12 |
| 72 | 1.8.5 | PDL编写 | manual | 2d | 2021-11-13 | 2021-11-15 |  | 王义博 | 2h | 99.12 |
| 73 | 1.8.6 | 小组会议 | manual | 1d | 2021-11-13 | 2021-11-13 |  | 吴联想 | 1h | 49.56 |
| 74 | 1.8.7 | 详细设计报告初稿修订 | manual | 2d | 2021-11-13 | 2021-11-15 |  | 郑航舰 | 2h | 99.12 |
| 75 | 1.8.8 | 详细设计报告PPT制作 | manual | 2d | 2021-11-13 | 2021-11-15 |  | 王义博 | 2h | 99.12 |
| 76 | 1.9 | **总体设计及详细设计修订+翻转PPT1** |  | 5d | 2021-11-18 | 2021-11-24 | 67 |  | 3h | 148.68 |
| 77 | 1.9.1 | 小组会议 | manual | 1d | 2021-11-19 | 2021-11-19 |  | 吴联想; 王义博 | 1h | 49.56 |
| 78 | 1.9.2 | 总体提报告及详细报告修订 | manual | 1d | 2021-11-19 | 2021-11-19 |  | 郑航舰 | 1h | 49.56 |
| 79 | 1.9.3 | 总体提报告及详细报告PPT修订 | manual | 1d | 2021-11-19 | 2021-11-19 |  | 王义博 | 1h | 49.56 |
| 80 | 1.10 | **代码清单+测试用例+翻转PPT2** |  | 5d? | 2021-11-25 | 2021-12-01 | 76 |  | 67h | 3,320.52 |
| 81 | 1.10.1 | 小组会议 | manual | 1d | 2021-11-25 | 2021-11-25 |  | 王义博; 吴联想; 郑航舰 | 1h | 49.56 |
| 82 | 1.10.2 | 确定代码编写风格 | manual | 1d | 2021-11-25 | 2021-11-25 |  | 吴联想 | 2h | 99.12 |
| 83 | 1.10.3 | 数据库建立 | manual | 1d | 2021-11-25 | 2021-11-25 |  | 王义博 | 2h | 99.12 |
| 84 | 1.10.4 | 服务器部署 | manual | 1d | 2021-11-25 | 2021-11-25 |  | 郑航舰 | 2h | 99.12 |
| 85 | 1.10.5 | **代码编写及测试** |  | 4d | 2021-11-26 | 2021-12-01 |  |  | 60h | 2,973.6 |
| 86 | 1.10.5.1 | **代码编写** |  | 4d | 2021-11-26 | 2021-12-01 |  |  | 56h | 2,775.36 |
| 87 | 1.10.5.1.1 | 登录界面 | manual | 1d | 2021-11-26 | 2021-11-26 |  | 吴联想 | 4h | 198.24 |
| 88 | 1.10.5.1.2 | 注册与忘记密码界面 | manual | 1d | 2021-11-26 | 2021-11-26 |  | 吴联想 | 4h | 198.24 |
| 89 | 1.10.5.1.3 | 表白墙（发帖）模块 | manual | 1d | 2021-11-26 | 2021-11-26 |  | 王义博 | 4h | 198.24 |
| 90 | 1.10.5.1.4 | 回帖模块 | manual | 1d | 2021-11-26 | 2021-11-26 |  | 王义博 | 4h | 198.24 |
| 91 | 1.10.5.1.5 | 个人页面 | manual | 1d | 2021-11-26 | 2021-11-26 |  | 郑航舰 | 4h | 198.24 |
| 92 | 1.10.5.1.6 | 管理员显示用户信息 | manual | 1d | 2021-11-26 | 2021-11-26 |  | 郑航舰 | 4h | 198.24 |
| 93 | 1.10.5.1.7 | 管理员添加用户 | manual | 1d | 2021-11-26 | 2021-11-26 |  | 郑航舰 | 4h | 198.24 |
| 94 | 1.10.5.1.8 | 管理员删除用户 | manual | 1d | 2021-11-26 | 2021-11-26 |  | 吴联想 | 4h | 198.24 |
| 95 | 1.10.5.1.9 | 修改密码页面 | manual | 1d | 2021-11-26 | 2021-11-26 |  | 王义博 | 4h | 198.24 |
| 96 | 1.10.5.1.10 | 页面整合与跳转逻辑 | manual | 1d | 2021-11-26 | 2021-11-26 |  | 吴联想 | 4h | 198.24 |
| 97 | 1.10.5.1.11 | 代码走查 | manual | 1d | 2021-11-27 | 2021-11-27 |  | 吴联想 | 4h | 198.24 |
| 98 | 1.10.5.1.12 | 登录模块实现 | manual | 1d | 2021-11-27 | 2021-11-27 |  | 郑航舰 | 4h | 198.24 |
| 99 | 1.10.5.1.13 | 管理员模块实现 | manual | 1d | 2021-11-27 | 2021-11-27 |  | 王义博 | 4h | 198.24 |
| 100 | 1.10.5.1.14 | 代码走查 | manual | 1d | 2021-11-27 | 2021-11-27 |  | 吴联想 | 2h | 99.12 |
| 101 | 1.10.5.1.15 | 代码整合 | manual | 1d | 2021-11-27 | 2021-11-27 |  | 吴联想; 王义博; 郑航舰 | 2h | 99.12 |

| ID | WBS | Task | Type | Duration | Start | Finish | Predecessors | Resources | Work | Cost |
| --- | --- | --- | --- | --- | --- | --- | --- | --- | --- | --- |
| 102 | 1.10.5.2 | **软件测试** |  | 4d | 2021-11-28 | 2021-12-01 | 86 |  | 4h | 198.24 |
| 103 | 1.10.5.2.1 | 单元测试 | manual | 1d | 2021-11-28 | 2021-11-28 |  | 王义博 | 4h | 198.24 |
| 104 | 1.10.5.2.2 | 集成测试 | milestone, manual | 0d | 2021-12-01 | 2021-12-01 |  | 郑航舰 |  |  |
| 105 | 1.10.5.2.3 | 系统测试 | milestone, manual | 0d | 2021-12-01 | 2021-12-01 |  | 吴联想 |  |  |
| 106 | 1.11 | **系统测试报告** |  | 5d | 2021-12-02 | 2021-12-08 | 80 |  | 7h | 346.92 |
| 107 | 1.11.1 | 小组会议 | manual | 1d | 2021-12-03 | 2021-12-03 |  | 吴联想; 王义博; 郑航舰 | 1h | 49.56 |
| 108 | 1.11.2 | 系统实现及测试报告初稿 | manual | 2d | 2021-12-03 | 2021-12-06 |  | 吴联想 | 2h | 99.12 |
| 109 | 1.11.3 | 系统实现及测试报告初稿修订 | manual | 1d | 2021-12-04 | 2021-12-04 |  | 郑航舰 | 2h | 99.12 |
| 110 | 1.11.4 | 系统实现及测试报告PPT制作 | manual | 1d | 2021-12-04 | 2021-12-04 |  | 王义博 | 2h | 99.12 |
| 111 | 1.12 | **测试报告修订** |  | 5d? | 2021-12-09 | 2021-12-15 | 106 |  | 17h | 842.52 |
| 112 | 1.12.1 | 小组会议 | manual | 1d | 2021-12-10 | 2021-12-10 |  | 王义博; 吴联想; 郑航舰 | 1h | 49.56 |
| 113 | 1.12.2 | 用户确认 | manual | 1d | 2021-12-10 | 2021-12-10 |  | 郑航舰 | 2h | 99.12 |
| 114 | 1.12.3 | 软件修改 | manual | 1d | 2021-12-10 | 2021-12-10 |  | 吴联想 | 2h | 99.12 |
| 115 | 1.12.4 | 重新测试 | manual | 1d | 2021-12-10 | 2021-12-10 |  | 王义博 | 4h | 198.24 |
| 116 | 1.12.5 | 系统实现及测试报告修订 | manual | 2d | 2021-12-11 | 2021-12-13 |  | 郑航舰 | 4h | 198.24 |
| 117 | 1.12.6 | 系统实现及测试报告PPT修订 | manual | 2d | 2021-12-11 | 2021-12-13 |  | 王义博 | 4h | 198.24 |
| 118 | 1.13 | **项目总结报告，总评审PPT** |  | 10d | 2021-12-16 | 2021-12-29 | 111 |  | 13h | 644.28 |
| 119 | 1.13.1 | 小组会议 | manual | 1d | 2021-12-17 | 2021-12-17 |  | 吴联想; 王义博; 郑航舰 | 1h | 49.56 |
| 120 | 1.13.2 | 修改项目计划 | manual | 2d | 2021-12-17 | 2021-12-20 |  | 郑航舰 | 2h | 99.12 |
| 121 | 1.13.3 | 修改需求分析 | manual | 2d | 2021-12-17 | 2021-12-20 |  | 吴联想 | 2h | 99.12 |
| 122 | 1.13.4 | 用户bug反馈，修改 | manual | 2d | 2021-12-17 | 2021-12-20 |  | 吴联想 | 2h | 99.12 |
| 123 | 1.13.5 | 修改设计报告 | manual | 1d | 2021-12-17 | 2021-12-17 |  | 吴联想 | 2h | 99.12 |
| 124 | 1.13.6 | 项目总结报告初稿 | manual | 2d | 2021-12-18 | 2021-12-20 |  | 郑航舰 | 1h | 49.56 |
| 125 | 1.13.7 | 项目总结报告修改 | manual | 1d | 2021-12-18 | 2021-12-18 |  | 郑航舰 | 1h | 49.56 |
| 126 | 1.13.8 | 项目总结PPT制作 | manual | 1d | 2021-12-18 | 2021-12-18 |  | 王义博 | 2h | 99.12 |
| 127 | 1.14 | 课程作业评审 | manual | 1d | 2022-01-05 | 2022-01-05 |  | 王义博; 吴联想; 郑航舰 | 1h | 49.56 |
